# Tidsplan for SMDB-projekt (2007)

Schedule from MS Project, 2025-10-07 to 2027-07-13, status date 2020-05-27.
Ramboll

## Calendars

- Standard: Mon-Fri 08:00-12:00, 13:00-17:00; Sat-Sun off. Exceptions (off unless hours are given): 2025-10-13 (Efterårsferie), 2025-12-22 to 2026-01-04 (juleferie), 2026-02-09 to 2026-02-13 (vinterferie), 2026-03-30 to 2026-04-06 (Påskeferie), 2026-05-14 to 2026-05-15 (Kristihimmelfartsdag), 2026-05-25 (Pinseferie), 2026-07-01 to 2026-07-28 (Sommerferie), 2026-10-12 to 2026-10-16 (Efterårsferie), 2026-12-23 to 2027-01-03 (Juleferie), 2027-02-15 to 2027-02-19 (vinterferie 27), 2027-03-25 to 2027-03-29 (Påskeferie 27), 2027-05-17 (2 pinsedag), 2027-07-05 to 2027-07-30 (Sommerferie 27).
- 7 days a week: Mon-Sun 08:00-16:00.

## Schedule

| ID | WBS | Task | Type | Duration | Start | Finish | Predecessors | Total slack | Free slack |
| --- | --- | --- | --- | --- | --- | --- | --- | --- | --- |
| 1 | 1 | **Udformning af udbudsmateriale** |  | 72d | 2025-10-07 | 2026-01-29 |  | 133d |  |
| 2 | 1.1 | 0. Initiering af udbud | milestone | 0d | 2025-10-07 | 2025-10-07 |  | 387d |  |
| 3 | 1.2 | Opstartsmøde | milestone | 0d | 2025-10-07 | 2025-10-07 |  | 347d | 0d |
| 4 | 1.3 | Forberedelse planlægningsmøde |  | 5d | 2025-10-07 | 2025-10-14 | 3 | 347d | 0d |
| 5 | 1.4 | Planlægningsmøde | milestone | 0d | 2025-10-14 | 2025-10-14 | 4 | 347d | 0d |
| 6 | 1.5 | Forberedelse |  | 5d | 2025-10-15 | 2025-10-21 | 5 | 347d | 0d |
| 7 | 1.6 | 1. Workshop - Rammesætning/blueprint og udbudstrategi | milestone | 0d | 2025-10-21 | 2025-10-21 | 6 | 347d | 0d |
| 8 | 1.7 | Forberedelse |  | 5d | 2025-10-22 | 2025-10-28 | 7 | 347d | 0d |
| 9 | 1.8 | 2. Workshop - Kravstruktur og overordnet kravgruppering (kravspecifikation ) del 1 | milestone | 0d | 2025-10-28 | 2025-10-28 | 8 | 347d | 0d |
| 10 | 1.9 | Forberedelse |  | 5d | 2025-10-29 | 2025-11-04 | 9 | 347d | 0d |
| 11 | 1.10 | 3. Workshop - Samarbejdsorganisation, kundens ydelser, forpligtelser ved ophør og krav til dokumentation | milestone | 0d | 2025-11-04 | 2025-11-04 | 10 | 347d | 0d |
| 12 | 1.11 | Forberedelse |  | 5d | 2025-11-05 | 2025-11-11 | 11 | 347d | 0d |
| 13 | 1.12 | 4. Workshop - Projektdimension tidsplan og prøver | milestone | 0d | 2025-11-11 | 2025-11-11 | 12 | 347d | 0d |
| 14 | 1.13 | Forberedelse |  | 5d | 2025-11-12 | 2025-11-18 | 13 | 347d | 0d |
| 15 | 1.14 | 5. Workshop - Kundens IT-miljø herunder især driftsforhold | milestone | 0d | 2025-11-18 | 2025-11-18 | 14 | 347d | 0d |
| 16 | 1.15 | Forberedelse |  | 5d | 2025-11-19 | 2025-11-25 | 15 | 347d | 0d |
| 17 | 1.16 | 6. Workshop - Leverancebeskrivelse (Kravspecifikation) del 2 | milestone | 0d | 2025-11-25 | 2025-11-25 | 16 | 347d | 0d |
| 18 | 1.17 | Forberedelse |  | 5d | 2025-11-26 | 2025-12-02 | 17 | 347d |  |
| 19 | 1.18 | 7. Workshop - . Workshop - Vedligehold , support, servicemål | milestone | 0d | 2025-10-07 | 2025-10-07 |  | 369d | 0d |
| 20 | 1.19 | Forberedelse |  | 5d | 2025-10-07 | 2025-10-14 | 19 | 369d | 0d |
| 21 | 1.20 | 8. Workshop - Leverancebeskrivelse (Kravspecifikation) del 3 | milestone | 0d | 2025-10-14 | 2025-10-14 | 20 | 369d | 0d |
| 22 | 1.21 | Forberedelse |  | 5d | 2025-10-15 | 2025-10-21 | 21 | 369d | 0d |
| 23 | 1.22 | 9. Workshop- Kravspec del 4 | milestone | 0d | 2025-10-21 | 2025-10-21 | 22 | 369d | 0d |
| 24 | 1.23 | Forberedelse |  | 8d | 2025-10-22 | 2025-10-31 | 23 | 369d |  |
| 25 | 1.24 | 10. Workshop - Vedr. Bilag 1 og bilag 14 | milestone | 0d | 2025-10-07 | 2025-10-07 |  | 367d | 0d |
| 26 | 1.25 | Forberedelse |  | 5d | 2025-10-07 | 2025-10-14 | 25 | 367d | 0d |
| 27 | 1.26 | 11. Workshop Opsamling vedr. Kravspecifikation del 5 | milestone | 0d | 2025-10-14 | 2025-10-14 | 26 | 367d | 0d |
| 28 | 1.27 | Forberedelse |  | 5d | 2025-10-15 | 2025-10-21 | 27 | 367d | 0d |
| 29 | 1.28 | 12. Workshop - Kontrakten del 1 samt databehandleraftale | milestone | 0d | 2025-10-21 | 2025-10-21 | 28 | 367d | 0d |
| 30 | 1.29 | Forberedelse |  | 5d | 2025-10-22 | 2025-10-28 | 29 | 367d | 0d |
| 31 | 1.30 | 13. Workshop - Vedr. Bilag 5 og 6 | milestone | 0d | 2025-10-28 | 2025-10-28 | 30 | 367d | 0d |
| 32 | 1.31 | Forberedelse |  | 5d | 2025-10-29 | 2025-11-04 | 31 | 367d |  |
| 33 | 1.32 | 15. Workshop - Vederlag | milestone | 0d | 2025-10-07 | 2025-10-07 |  | 133d | 0d |
| 34 | 1.33 | Forberedelse |  | 5d | 2025-10-07 | 2025-10-14 | 33 | 133d | 0d |
| 35 | 1.34 | 16. Workshop Bekendtgørelse, udbudsbetingelser (herunder tildelingskriterier og evalueringsmodel) samt ekstra tjek af vederlag | milestone | 0d | 2025-10-14 | 2025-10-14 | 34 | 133d | 0d |
| 36 | 1.35 | Forberedelse |  | 4d | 2025-10-15 | 2025-10-20 | 35 | 133d | 0d |
| 37 | 1.36 | 17. Workshop - Samlet review af udbudsmateriale | milestone | 0d | 2025-10-20 | 2025-10-20 | 36 | 133d | 0d |
| 38 | 1.37 | Evt justering af materialet |  | 3d | 2025-10-21 | 2025-10-23 | 37 | 133d | 0d |
| 39 | 1.38 | Godkendelse styregruppe af samlet udbudsmateriale |  | 10d | 2025-10-24 | 2025-11-06 | 38 | 133d | 0d |
| 40 | 1.39 | Evt justering af materialet |  | 4d | 2025-11-07 | 2025-11-12 | 39 | 133d | 0d |
| 41 | 1.40 | Reviewmøde - opsamling fra LMST reviewrunde | milestone | 0d | 2025-11-12 | 2025-11-12 | 40 | 133d | 0d |
| 42 | 1.41 | Justering |  | 9d | 2025-11-13 | 2025-11-25 | 41 | 133d | 0d |
| 43 | 1.42 | Statusmøde vedr. Leverancevederlag etc. | milestone | 0d | 2025-11-25 | 2025-11-25 | 42 | 133d | 0d |
| 44 | 1.43 | Justering |  | 7d | 2025-11-26 | 2025-12-04 | 43 | 133d | 0d |
| 45 | 1.44 | Samlet reviewmøde | milestone | 0d | 2025-12-04 | 2025-12-04 | 44 | 133d | 0d |
| 46 | 1.45 | Justering |  | 5d | 2025-12-05 | 2025-12-11 | 45 | 133d | 0d |
| 47 | 1.46 | Styregrupppemøde | milestone | 0d | 2025-12-11 | 2025-12-11 | 46 | 133d | 0d |
| 48 | 1.47 | Justering |  | 25d | 2025-12-12 | 2026-01-29 | 47 | 133d | 0d |
| 49 | 1.48 | Milepæl: Indrykning af udbudsbekendtgørelse og publicering af det samlede udbudsmateriale | milestone | 0d | 2026-01-29 | 2026-01-29 | 48 | 133d | 0d |

| ID | WBS | Task | Type | Duration | Start | Finish | Predecessors | Total slack | Free slack | Constraint | Calendar |
| --- | --- | --- | --- | --- | --- | --- | --- | --- | --- | --- | --- |
| 50 | 2 | **Prækvalifikationsfase** |  | 163d | 2026-01-30 | 2026-11-09 |  | 133d |  |  |  |
| 51 | 2.1 | Leverandøren udarbejder prækvalifikation |  | 22d | 2026-01-30 | 2026-03-09 | 49 | 133d | 0d |  |  |
| 52 | 2.2 | Spørgsmål svar |  | 22d | 2026-10-02 | 2026-11-09 |  | 152d |  | start no earlier than 2026-10-02 |  |
| 53 | 2.3 | Modtagelse af prækvalifikationsmateriale | milestone | 0d | 2026-03-09 | 2026-03-09 | 51 | 133d | 0d |  |  |
| 54 | 2.4 | Vurdering og indstilling vedr. prækval |  | 16d | 2026-03-10 | 2026-04-08 | 53 | 133d | 0d |  |  |
| 55 | 2.5 | Godkendelse af indstilling vedr prækval |  | 3d | 2026-04-09 | 2026-04-13 | 54 | 133d | 0d |  |  |
| 56 | 2.6 | Milepæl: Udarbejdelse af afslagsbreve + opfordring til afgivelse af indledende tilbud | milestone | 0d | 2026-04-13 | 2026-04-13 | 55 | 133d | 0d |  |  |
| 57 | 3 | **Tilbudsfasen (indledende tilbud)** |  | 171d | 2026-04-14 | 2027-01-27 |  | 103d |  |  |  |
| 58 | 3.1 | Tilbudsgivere udarbejder tilbud |  | 25d | 2026-04-14 | 2026-05-20 | 56 | 133d |  |  |  |
| 59 | 3.2 | Spørgsmål svar - før jul |  | 10d | 2026-04-14 | 2026-04-27 | 56 | 264d |  |  |  |
| 60 | 3.3 | Spørgsmål svar efter jul |  | 5d | 2027-01-04 | 2027-01-08 |  | 0d |  | start no earlier than 2027-01-04 |  |
| 61 | 3.4 | Modtagelse af tilbudsmateriale | milestone | 0d | 2027-01-08 | 2027-01-08 | 58, 60 | 0d |  |  |  |
| 62 | 3.5 | Evaluering af tilbud og udarbejdelse af spørgsmål til forhandlingsrunden (beslutning om forhandling) |  | 13d | 2027-01-11 | 2027-01-27 | 61 | 0d |  |  |  |
| 63 | 4 | **Forhandlingsrunde 1** |  | 18d | 2027-01-28 | 2027-03-01 |  | 0d |  |  |  |
| 64 | 4.1 | Forventet tidspunkt for fremsendelse af diskussionsliste og agenda mv. til Tilbudsgiver 1, 2 og 3 |  | 4d | 2027-01-28 | 2027-02-02 | 62 | 0d |  |  |  |
| 65 | 4.2 | Dialogmøder med tilbudsgiver 1, 2 og 3 |  | 5d | 2027-02-03 | 2027-02-09 | 64 | 0d |  |  |  |
| 66 | 4.3 | Revidering af udbudsmateriale |  | 9d | 2027-02-10 | 2027-03-01 | 65 | 0d |  |  |  |
| 67 | 4.4 | Forventet tidspunkt for meddelelse om første reviderede tilbud samt udsendelse af evt. revideret udbudsmateriale | milestone | 0d | 2027-03-01 | 2027-03-01 | 66 | 0d |  |  |  |
| 68 | 5 | **Tilbudsfasen (endeligt tilbud)** |  | 84d | 2027-03-02 | 2027-07-01 |  | 0d |  |  |  |
| 69 | 5.1 | Tilbudsgivere udarbejder tilbud (frist vurderes konkret I relation til karakteren af ændringer I udbudsmaterialet) |  | 23d | 2027-03-02 | 2027-04-06 | 67 | 0d |  |  |  |
| 70 | 5.2 | Spørgsmål svar |  | 17d | 2027-04-07 | 2027-04-29 | 69 | 0d |  | start no earlier than 2027-03-15 |  |
| 71 | 5.3 | Modtagelse af endeligt tilbud | milestone | 0d | 2027-04-29 | 2027-04-29 | 70 | 0d |  |  |  |
| 72 | 5.4 | Evaluering af endelige tilbud |  | 12d | 2027-04-30 | 2027-05-18 | 71 | 0d |  |  |  |
| 73 | 5.5 | Udarbejdelse af indstillingsnotat projektteam |  | 10d | 2027-05-19 | 2027-06-01 | 72 | 0d |  |  |  |
| 74 | 5.6 | Proces med styregruppe |  | 5d | 2027-06-02 | 2027-06-08 | 73 | 0d |  |  |  |
| 75 | 5.7 | Verifikation af ESPD (ligger uden for vores kontrol) |  | 10d | 2027-06-09 | 2027-06-22 | 74 | 0d |  |  |  |
| 76 | 5.8 | Tjek af verifikation af ESPD og godkendelse af indstilling |  | 5d | 2027-06-23 | 2027-06-29 | 75 | 0d |  |  |  |
| 77 | 5.9 | Udarbejdelse af afslagsbreve |  | 2d | 2027-06-30 | 2027-07-01 | 76 | 0d |  |  |  |
| 78 | 5.10 | Milepæl: Udmelding til tilbudsgivere | milestone | 0d | 2027-07-01 | 2027-07-01 | 77 | 0d |  |  |  |
| 79 | 6 | Standstill |  | 12d | 2027-07-02 | 2027-07-13 | 78 | 0d |  |  | 7 days a week |
| 80 | 7 | Milepæl: Tidligst mulige kontraktunderskrivelse | milestone | 0d | 2027-07-13 | 2027-07-13 | 79 | 0d |  |  |  |
